# Projet Web

Schedule from MS Project, 2018-04-09 to 2018-04-16, 7 hours a day.

## Calendars

- Standard: Mon-Wed 08:30-12:30, 13:30-17:30; Thu 08:30-12:30; Fri 08:30-12:30, 13:30-17:30; Sat-Sun off.

## Schedule

| ID | WBS | Task | Duration | Start | Finish | Predecessors | Total slack | Free slack |
| --- | --- | --- | --- | --- | --- | --- | --- | --- |
| 1 | 1 | **gestion de projet** | 4d? | 2018-04-09 | 2018-04-13 |  | 0d |  |
| 2 | 1.1 | PBS | 1d? | 2018-04-09 | 2018-04-09 |  | 0d |  |
| 3 | 1.2 | WBS | 1d? | 2018-04-09 | 2018-04-10 | 2 | 0d |  |
| 4 | 1.3 | OBS | 1d? | 2018-04-10 | 2018-04-11 | 3 | 0d |  |
| 5 | 1.4 | MS Project | 1d? | 2018-04-10 | 2018-04-11 | 3 | 3d |  |
| 6 | 1.5 | PERT | 1d? | 2018-04-11 | 2018-04-13 | 4 | 2d |  |
| 7 | 1.6 | GANTT | 1d? | 2018-04-11 | 2018-04-13 | 4 | 0d |  |
| 8 | 2 | **BDD** | 4d? | 2018-04-09 | 2018-04-13 |  | -4d | 0d |
| 9 | 2.1 | MCD | 1d? | 2018-04-09 | 2018-04-09 |  | -4d | 0d |
| 10 | 2.2 | MPD | 1d? | 2018-04-09 | 2018-04-10 | 9 | -4d | 0d |
| 11 | 2.3 | MLD | 1d? | 2018-04-10 | 2018-04-11 | 10 | -4d | 0d |
| 12 | 2.4 | Jeu de donnée | 1d? | 2018-04-11 | 2018-04-13 | 11 | -4d | 0d |
| 13 | 3 | **site** | 6d? | 2018-04-09 | 2018-04-16 |  | 0d |  |
| 14 | 3.1 | **front end** | 1d? | 2018-04-09 | 2018-04-09 |  | 5d |  |
| 15 | 3.1.1 | HTML | 1d? | 2018-04-09 | 2018-04-09 |  | 5d |  |
| 16 | 3.1.2 | CSS | 1d? | 2018-04-09 | 2018-04-09 |  | 5d |  |
| 17 | 3.1.3 | **JS** | 1d? | 2018-04-09 | 2018-04-09 |  | 5d |  |
| 18 | 3.1.3.1 | check mot de passe | 1d? | 2018-04-09 | 2018-04-09 |  | 5d |  |
| 19 | 3.2 | **back end** | 6d? | 2018-04-09 | 2018-04-16 |  | 0d |  |
| 20 | 3.2.1 | **interface de connexion** | 1d? | 2018-04-13 | 2018-04-13 |  | 1d |  |
| 21 | 3.2.1.1 | check le nom d'utilisatur dans la BDD | 1d? | 2018-04-13 | 2018-04-13 | 8 | 1d |  |
| 22 | 3.2.1.2 | check le hash du MDP dans la BDD | 1d? | 2018-04-13 | 2018-04-13 | 8 | 1d |  |
| 23 | 3.2.2 | **interface d'inscription** | 5d? | 2018-04-09 | 2018-04-13 |  | 1d |  |
| 24 | 3.2.2.1 | regex mdp | 1d? | 2018-04-09 | 2018-04-09 |  | 5d |  |
| 25 | 3.2.2.2 | check le nom d'utilisatur dans la BDD | 1d? | 2018-04-13 | 2018-04-13 | 8 | 1d |  |
| 26 | 3.2.2.3 | sauvegarder le hash du mdp dans la BDD | 1d? | 2018-04-13 | 2018-04-13 | 8 | 1d |  |
| 27 | 3.2.2.4 | savegarder le nom d'utilisateur et autres info dans la BDD | 1d? | 2018-04-13 | 2018-04-13 | 8 | 1d |  |

| ID | WBS | Task | Type | Duration | Start | Finish | Predecessors | Total slack |
| --- | --- | --- | --- | --- | --- | --- | --- | --- |
| 28 | 3.2.3 | **privilèges** |  | 2.14d | 2018-04-09 | 2018-04-10 |  | 0d |
| 29 | 3.2.3.1 | **BDE** |  | 1d | 2018-04-10 | 2018-04-10 |  | 0d |
| 30 | 3.2.3.1.1 | **Valider une idée** |  | 1d | 2018-04-10 | 2018-04-10 |  | 0d |
| 31 | 3.2.3.1.1.1 | réutiliser la fonction d'ajout | manual | 1d? | 2018-04-10 | 2018-04-10 | 63 |  |
| 32 | 3.2.3.2 | **Salarié** |  | 1d | 2018-04-09 | 2018-04-09 |  | 0d |
| 33 | 3.2.3.2.1 | **signaler** |  | 1d | 2018-04-09 | 2018-04-09 |  | 0d |
| 34 | 3.2.3.2.1.1 | image | manual | 1d? | 2018-04-09 | 2018-04-09 |  |  |
| 35 | 3.2.3.2.1.2 | commentaire | manual | 1d? | 2018-04-09 | 2018-04-09 |  |  |
| 36 | 3.2.3.2.1.3 | event | manual | 1d? | 2018-04-09 | 2018-04-09 |  |  |
| 37 | 3.2.4 | **boite à idée** |  | 2d? | 2018-04-13 | 2018-04-16 |  | 0d |
| 38 | 3.2.4.1 | **étudiant** |  | 1d? | 2018-04-13 | 2018-04-13 |  | 0d |
| 39 | 3.2.4.1.1 | proposer une idée |  | 1d? | 2018-04-13 | 2018-04-13 | 7 | 0d |
| 40 | 3.2.4.2 | **BDE** |  | 1d? | 2018-04-13 | 2018-04-16 |  | 0d |
| 41 | 3.2.4.2.1 | valider une idée |  | 1d? | 2018-04-13 | 2018-04-16 | 31SS, 39 | 0d |
| 42 | 3.2.5 | **boutique** |  | 5d? | 2018-04-09 | 2018-04-13 |  | 1d |
| 43 | 3.2.5.1 | **étudiant** |  | 5d? | 2018-04-09 | 2018-04-13 |  | 1d |
| 44 | 3.2.5.1.1 | **commander** |  | 5d? | 2018-04-09 | 2018-04-13 |  | 1d |
| 45 | 3.2.5.1.1.1 | ajouter au panier |  | 1d? | 2018-04-09 | 2018-04-09 |  | 5d |
| 46 | 3.2.5.1.1.2 | notifier le BDE |  | 1d? | 2018-04-09 | 2018-04-09 |  | 5d |
| 47 | 3.2.5.1.1.3 | auto save le pannier |  | 1d? | 2018-04-13 | 2018-04-13 | 8 | 1d |
| 48 | 3.2.5.1.2 | **interface** |  | 1d? | 2018-04-13 | 2018-04-13 |  | 1d |
| 49 | 3.2.5.1.2.1 | 3 best sellers |  | 1d? | 2018-04-13 | 2018-04-13 | 8 | 1d |
| 50 | 3.2.5.1.2.2 | menu de recherche |  | 1d? | 2018-04-13 | 2018-04-13 | 8 | 1d |
| 51 | 3.2.5.1.3 | paypal optionnel |  | 1d? | 2018-04-09 | 2018-04-09 |  | 5d |

| ID | WBS | Task | Type | Duration | Start | Finish | Predecessors | Total slack |
| --- | --- | --- | --- | --- | --- | --- | --- | --- |
| 52 | 3.2.5.2 | **BDE** |  | 1d? | 2018-04-13 | 2018-04-13 | 8 | 1d |
| 53 | 3.2.5.2.1 | ajouter article |  | 1d? | 2018-04-13 | 2018-04-13 | 8 | 1d |
| 54 | 3.2.5.2.2 | modif article (optionnel) |  | 1d? | 2018-04-13 | 2018-04-13 | 8 | 1d |
| 55 | 3.2.5.2.3 | suppr article |  | 1d? | 2018-04-13 | 2018-04-13 | 8 | 1d |
| 56 | 3.2.6 | **fil d'actu** |  | 5d? | 2018-04-09 | 2018-04-13 | 8 | 0d |
| 57 | 3.2.6.1 | **Salarié** |  | 1d | 2018-04-09 | 2018-04-09 | 8 | 0d |
| 58 | 3.2.6.1.1 | **Report** |  | 1d | 2018-04-09 | 2018-04-09 |  | 0d |
| 59 | 3.2.6.1.1.1 | photo | manual | 1d? | 2018-04-09 | 2018-04-09 |  |  |
| 60 | 3.2.6.1.1.2 | event | manual | 1d? | 2018-04-09 | 2018-04-09 |  |  |
| 61 | 3.2.6.1.1.3 | commentaire | manual | 1d? | 2018-04-09 | 2018-04-09 |  |  |
| 62 | 3.2.6.2 | **BDE** |  | 5d? | 2018-04-09 | 2018-04-13 | 8 | 0d |
| 63 | 3.2.6.2.1 | **ajouter un event** |  | 1d | 2018-04-09 | 2018-04-09 |  | 0d |
| 64 | 3.2.6.2.1.1 | description | manual | 1d? | 2018-04-09 | 2018-04-09 |  |  |
| 65 | 3.2.6.2.1.2 | image | manual | 1d? | 2018-04-09 | 2018-04-09 |  |  |
| 66 | 3.2.6.2.1.3 | date | manual | 1d? | 2018-04-09 | 2018-04-09 |  |  |
| 67 | 3.2.6.2.1.4 | flag ponctuel/récurrent et payant/gratuit | manual | 1d? | 2018-04-09 | 2018-04-09 |  |  |
| 68 | 3.2.6.2.2 | **admin les events passés** |  | 1d | 2018-04-09 | 2018-04-09 |  | 0d |
| 69 | 3.2.6.2.2.1 | photos | manual | 1d? | 2018-04-09 | 2018-04-09 |  |  |
| 70 | 3.2.6.2.2.2 | commentaires | manual | 1d? | 2018-04-09 | 2018-04-09 |  |  |
| 71 | 3.2.6.2.3 | dl les inscrits sur un évenement |  | 1d? | 2018-04-13 | 2018-04-13 |  | 1d |
| 72 | 3.2.6.3 | **étudiant** |  | 1d? | 2018-04-13 | 2018-04-13 | 8 | 1d |
| 73 | 3.2.6.3.1 | voir les activités |  | 1d? | 2018-04-13 | 2018-04-13 |  | 1d |
| 74 | 3.2.6.3.2 | s'inscrire |  | 1d? | 2018-04-13 | 2018-04-13 |  | 1d |
| 75 | 3.2.6.3.3 | poster des photos |  | 1d? | 2018-04-13 | 2018-04-13 |  | 1d |
| 76 | 3.2.6.3.4 | like |  | 1d? | 2018-04-13 | 2018-04-13 |  | 1d |
| 77 | 3.2.6.3.5 | commenter |  | 1d? | 2018-04-13 | 2018-04-13 |  | 1d |
